Schedule from MS Project, 2024-11-08 to 2025-12-08, A marks actual dates.

## Calendars

- Standard: Mon-Fri 08:00-12:00, 13:00-17:00; Sat-Sun off.

## Schedule

| ID | WBS | Task | Type | Duration | Start | Finish | Predecessors | Complete | Remaining | Baseline start | Baseline finish | Baseline duration | Total slack |
| --- | --- | --- | --- | --- | --- | --- | --- | --- | --- | --- | --- | --- | --- |
| 1 | 1 | **Proyecto** |  | 282d | 2024-11-08 A | 2025-12-08 |  | 75% | 70.5d | 2024-11-08 | 2025-12-08 | 282d | 0d |
| 2 | 1.1 | **ESTRUCTURAS, REVESTIMIENTOS, CUBIERTAS Y TERMINACIONES** |  | 147d | 2025-05-16 A | 2025-12-08 |  | 48% | 75.77d | 2025-05-16 | 2025-12-08 | 147d | 0d |
| 3 | 1.1.1 | Estructura Metalica Montado y Pintado | manual | 52d | 2025-05-16 A | 2025-07-28 A | 36 | 100% |  | 2025-05-16 | 2025-07-28 | 52d |  |
| 4 | 1.1.2 | Aislación | manual | 32d | 2025-09-11 | 2025-10-24 | 5 |  |  | 2025-09-11 | 2025-10-24 | 32d |  |
| 5 | 1.1.3 | Divisiones interiores bodegas | manual | 32d | 2025-07-29 A | 2025-09-10 | 3 | 51% | 15.75d | 2025-07-29 | 2025-09-10 | 32d |  |
| 6 | 1.1.4 | Oficinas | manual | 10d | 2025-10-27 | 2025-11-07 | 4 |  |  | 2025-10-27 | 2025-11-07 | 10d |  |
| 7 | 1.1.5 | Drenes (CuboDren) | manual | 12d | 2025-11-10 | 2025-11-25 | 6 |  |  | 2025-11-10 | 2025-11-25 | 12d |  |
| 8 | 1.1.6 | Portones Bodegas | manual | 6d | 2025-11-26 | 2025-12-03 | 7 |  |  | 2025-11-26 | 2025-12-03 | 6d |  |
| 9 | 1.1.7 | Puertas exteriores | manual | 9d | 2025-11-26 | 2025-12-08 | 7 |  |  | 2025-11-26 | 2025-12-08 | 9d |  |
| 10 | 1.1.8 | Muros cortinas, ventanas y puertas vidriadas | manual | 4d | 2025-07-29 A | 2025-08-01 A | 3 | 100% |  | 2025-07-29 | 2025-08-01 | 4d |  |
| 11 | 1.1.9 | Porteria Acogida, bicicletero y barrera acceso | manual | 3d | 2025-07-29 A | 2025-07-31 A | 3 | 100% |  | 2025-07-29 | 2025-07-31 | 3d |  |
| 12 | 1.1.10 | Sala electrica | manual | 3d | 2025-11-10 | 2025-11-12 | 11, 6 |  |  | 2025-11-10 | 2025-11-12 | 3d |  |
| 13 | 1.1.11 | Sala agua potable | manual | 2d | 2025-11-10 | 2025-11-11 | 6 |  |  | 2025-11-10 | 2025-11-11 | 2d |  |
| 14 | 1.1.12 | Sala residuos | manual | 2d | 2025-11-10 | 2025-11-11 | 6 |  |  | 2025-11-10 | 2025-11-11 | 2d |  |
| 15 | 1.1.13 | Cierre Perimetral Acmaford | manual | 4d | 2025-08-01 A | 2025-08-06 A | 11 | 100% |  | 2025-08-01 | 2025-08-06 | 4d |  |
| 16 | 1.1.14 | Cierre perimetral Bulldog | manual | 7d | 2025-08-07 A | 2025-08-15 A | 15 | 100% |  | 2025-08-07 | 2025-08-15 | 7d |  |
| 17 | 1.2 | **Movimientros de tierras, fundaciones y vialidad** |  | 145d | 2024-11-08 A | 2025-05-29 A |  | 100% |  | 2024-11-08 | 2025-05-29 | 145d |  |
| 18 | 1.2.1 | Excavación en TCN Caminos | manual | 1d | 2024-11-08 A | 2024-11-08 A |  | 100% |  | 2024-11-08 | 2024-11-08 | 1d |  |
| 19 | 1.2.2 | Excavación en TCN Bodegas | manual | 26d | 2024-11-08 A | 2024-12-13 A |  | 100% |  | 2024-11-08 | 2024-12-13 | 26d |  |
| 20 | 1.2.3 | Mejoramiento Fundaciones con integral natural (1,5 m.) | manual | 35d | 2024-12-16 A | 2025-01-31 A | 19 | 100% |  | 2024-12-16 | 2025-01-31 | 35d |  |
| 21 | 1.2.4 | Mejoramiento Fundaciones con integral natural (0,5 m.) | manual | 14d | 2025-02-03 A | 2025-02-20 A | 20 | 100% |  | 2025-02-03 | 2025-02-20 | 14d |  |
| 22 | 1.2.5 | Relleno Estructural bajo 2" (entre Fundaciones hasta Subrasante) | manual | 2d | 2025-02-25 A | 2025-02-26 A | 23 | 100% |  | 2025-02-25 | 2025-02-26 | 2d |  |
| 23 | 1.2.6 | Relleno Estructural bajo 6" (entre Fundaciones hasta Subrasante) | manual | 2d | 2025-02-21 A | 2025-02-24 A | 21 | 100% |  | 2025-02-21 | 2025-02-24 | 2d |  |
| 24 | 1.2.7 | Relleno Estructural bajo 2" Bodegas, Oficinas, VF | manual | 3d | 2025-02-25 A | 2025-02-27 A | 23 | 100% |  | 2025-02-25 | 2025-02-27 | 3d |  |
| 25 | 1.2.8 | Terraplén caminos y areas de servicio | manual | 11d | 2024-11-11 A | 2024-11-25 A | 18 | 100% |  | 2024-11-11 | 2024-11-25 | 11d |  |
| 26 | 1.2.9 | Terraplén bajo radier bodegas | manual | 10d | 2025-02-28 A | 2025-03-13 A | 22, 24 | 100% |  | 2025-02-28 | 2025-03-13 | 10d |  |
| 27 | 1.2.10 | Preparación de la Subrasante Bodegas | manual | 21d | 2025-03-14 A | 2025-04-11 A | 26 | 100% |  | 2025-03-14 | 2025-04-11 | 21d |  |
| 28 | 1.2.11 | Preparación de la Subrasante Caminos y Areas de Servicio | manual | 13d | 2024-11-26 A | 2024-12-12 A | 25 | 100% |  | 2024-11-26 | 2024-12-12 | 13d |  |
| 29 | 1.2.12 | Base Granular Caminos | manual | 1d | 2024-12-13 A | 2024-12-13 A | 28 | 100% |  | 2024-12-13 | 2024-12-13 | 1d |  |
| 30 | 1.2.13 | Base Granular Bodegas | manual | 1d | 2025-04-14 A | 2025-04-14 A | 27 | 100% |  | 2025-04-14 | 2025-04-14 | 1d |  |
| 31 | 1.2.14 | Hormigón G-25 radier (malla acma C-92) | manual | 2d | 2025-05-15 A | 2025-05-16 A | 40 | 100% |  | 2025-05-15 | 2025-05-16 | 2d |  |
| 32 | 1.2.15 | Hormigón G-35 calles | manual | 1d | 2024-12-16 A | 2024-12-16 A | 29 | 100% |  | 2024-12-16 | 2024-12-16 | 1d |  |
| 33 | 1.2.16 | Hormigón G-25 Fundaciones Zapatas Bodegas y Oficinas | manual | 1d | 2025-05-05 A | 2025-05-05 A | 38 | 100% |  | 2025-05-05 | 2025-05-05 | 1d |  |
| 34 | 1.2.17 | Hormigón G-04 Emplantillado Fundaciones Galpones y Oficinas | manual | 1d | 2025-04-15 A | 2025-04-15 A | 30 | 100% |  | 2025-04-15 | 2025-04-15 | 1d |  |
| 35 | 1.2.18 | Hormigón G-25 Vigas de Fundación Galpones y Oficinas | manual | 1d | 2025-05-05 A | 2025-05-05 A | 38 | 100% |  | 2025-05-05 | 2025-05-05 | 1d |  |
| 36 | 1.2.19 | Hormigón G-25 Pedestales Galpones y Oficinas | manual | 1d | 2025-05-15 A | 2025-05-15 A | 40 | 100% |  | 2025-05-15 | 2025-05-15 | 1d |  |
| 37 | 1.2.20 | Hormigón G-25 Muros Galpones y Oficinas | manual | 1d | 2025-05-29 A | 2025-05-29 A | 41 | 100% |  | 2025-05-29 | 2025-05-29 | 1d |  |
| 38 | 1.2.21 | Enfierradura Fundaciones Zapatas Galpones y Oficinas | manual | 13d | 2025-04-16 A | 2025-05-02 A | 34 | 100% |  | 2025-04-16 | 2025-05-02 | 13d |  |
| 39 | 1.2.22 | Enfierradura Vigas de Fundación Galpones y Oficinas | manual | 4d | 2025-04-16 A | 2025-04-21 A | 34 | 100% |  | 2025-04-16 | 2025-04-21 | 4d |  |
| 40 | 1.2.23 | Enfierradura Pedestales Galpones y Oficinas | manual | 7d | 2025-05-06 A | 2025-05-14 A | 33, 35 | 100% |  | 2025-05-06 | 2025-05-14 | 7d |  |
| 41 | 1.2.24 | Enfierradura Muros Galpones y Oficinas | manual | 8d | 2025-05-19 A | 2025-05-28 A | 31 | 100% |  | 2025-05-19 | 2025-05-28 | 8d |  |
| 42 | 1.2.25 | Demolición de Aceras | manual | 1d | 2024-11-11 A | 2024-11-11 A | 18 | 100% |  | 2024-11-11 | 2024-11-11 | 1d |  |
| 43 | 1.2.26 | Remoción de Soleras | manual | 1d | 2024-11-11 A | 2024-11-11 A | 18 | 100% |  | 2024-11-11 | 2024-11-11 | 1d |  |
| 44 | 1.2.27 | Solera Tipo A | manual | 7d | 2024-11-12 A | 2024-11-20 A | 43 | 100% |  | 2024-11-12 | 2024-11-20 | 7d |  |
